# Fabricação e Fornecimento do Tanque de Armazenamento TQ-960-30/1 (API 650) – Obra 2026-000037

Schedule from MS Project XML, 2026-08-31 to 2027-01-20.

## Schedule

| ID | WBS | Task | Duration | Start | Finish | Predecessors | Estimativa Otimista | Estimativa Provavel | Estimativa Pessimista | Indice Criticidade (%) | Pacote WBS / EAP |
| --- | --- | --- | --- | --- | --- | --- | --- | --- | --- | --- | --- |
| 1 | 0 | Fabricação e Fornecimento do Tanque de Armazenamento TQ-960-30/1 (API 650) – Obra 2026-000037 | 142d | 2026-08-31 | 2027-01-20 |  |  |  |  |  |  |
| 2 | 1.0 | **1.0 ATIVIDADES (Peso: 2%)** | 3d | 2026-08-31 | 2026-09-03 |  |  |  |  |  |  |
| 3 | 1.1 | Kick-off Meeting & Alinhamento de Requisitos (Oxiteno S.A. / Grupo Indorama) | 1d | 2026-08-31 | 2026-09-01 |  | 0.8 d | 1.0 d | 1.5 d | 100.0% | 1.0 - ATIVIDADES |
| 4 | 1.2 | Formalização do Termo de Abertura do Projeto (TAP) & Governança | 1d | 2026-09-02 | 2026-09-03 | 3 | 0.8 d | 1.0 d | 1.5 d | 100.0% | 1.0 - ATIVIDADES |
| 5 | 2.0 | **2.0 METODOS E PROCESSOS (Peso: 20%)** | 27d | 2026-09-04 | 2026-10-01 |  |  |  |  |  |  |
| 6 | 2.1 | Projeto Executivo & Detalhamento Mecânico 2D/3D (TQ-0960-30) | 4.25d | 2026-09-04 | 2026-09-11 | 4 | 3.4 d | 4.3 d | 6.4 d | 100.0% | 2.0 - METODOS E PROCESSOS |
| 7 | 2.2 | Memórias de Cálculo Estrutural e Pressão (API 650 / ASME) | 3.5d | 2026-09-14 | 2026-09-18 | 6 | 2.9 d | 3.6 d | 5.4 d | 100.0% | 2.0 - METODOS E PROCESSOS |
| 8 | 2.3 | Elaboração do PIT (Plano de Inspeção e Testes) e EPS/RQPS | 2.75d | 2026-09-21 | 2026-09-24 | 7 | 2.2 d | 2.8 d | 4.2 d | 100.0% | 2.0 - METODOS E PROCESSOS |
| 9 | 2.4 | Submissão, Análise e Aprovação Técnica pelo Cliente | 3.5d | 2026-09-25 | 2026-10-01 | 8 | 2.9 d | 3.6 d | 5.4 d | 100.0% | 2.0 - METODOS E PROCESSOS |
| 10 | 3.0 | **3.0 SUPRIMENTOS (Peso: 30%)** | 35d | 2026-10-02 | 2026-11-06 |  |  |  |  |  |  |
| 11 | 3.1 | Requisição de Compras & Cotação de Matérias-Primas Inox | 3.12d | 2026-10-02 | 2026-10-08 | 9 | 2.6 d | 3.2 d | 4.8 d | 100.0% | 3.0 - SUPRIMENTOS |
| 12 | 3.2 | Fabricação e Entrega de Chapas Inox SA-240 304 e Tubos pela Usina | 12.75d | 2026-10-09 | 2026-10-28 | 11 | 10.2 d | 12.8 d | 19.2 d | 100.0% | 3.0 - SUPRIMENTOS |
| 13 | 3.3 | Aquisição de Forjados, Flanges, Juntas PTFE e Estojos (Paralelo) | 6.38d | 2026-10-09 | 2026-10-20 | 11 | 5.1 d | 6.4 d | 9.6 d | 0.0% | 3.0 - SUPRIMENTOS |
| 14 | 3.4 | Recebimento, Inspeção Dimensional e Rastreabilidade de MP na Fábrica | 5.25d | 2026-10-29 | 2026-11-06 | 12, 13 | 4.2 d | 5.3 d | 7.9 d | 100.0% | 3.0 - SUPRIMENTOS |
| 15 | 4.0 | **4.0 FABRICAÇÃO E MONTAGEM (Peso: 40%)** | 53d | 2026-11-09 | 2027-01-01 |  |  |  |  |  |  |
| 16 | 4.1 | Traçado, Corte a Plasma e Chanfro das Chapas do Costado e Fundo | 4.25d | 2026-11-09 | 2026-11-16 | 14 | 3.4 d | 4.3 d | 6.4 d | 100.0% | 4.0 - FABRICAÇÃO E MONTAGEM |
| 17 | 4.2 | Calandragem das Virolas e Pré-Montagem dos Aneis do Costado | 4.25d | 2026-11-17 | 2026-11-24 | 16 | 3.4 d | 4.3 d | 6.4 d | 100.0% | 4.0 - FABRICAÇÃO E MONTAGEM |
| 18 | 4.3 | Soldagem das Juntas Longitudinais e Circunferencias (ASME IX) | 7d | 2026-11-25 | 2026-12-07 | 17 | 5.7 d | 7.1 d | 10.6 d | 100.0% | 4.0 - FABRICAÇÃO E MONTAGEM |
| 19 | 4.4 | Montagem e Soldagem do Fundo Plano e Teto Cônico Autoportante | 4.25d | 2026-12-08 | 2026-12-15 | 18 | 3.4 d | 4.3 d | 6.4 d | 100.0% | 4.0 - FABRICAÇÃO E MONTAGEM |
| 20 | 4.5 | Fabricação/Instalação de Bocais A1-W1, Boca de Visita M1 e Acessórios | 4.25d | 2026-12-16 | 2026-12-23 | 19 | 3.4 d | 4.3 d | 6.4 d | 100.0% | 4.0 - FABRICAÇÃO E MONTAGEM |
| 21 | 4.6 | Execução de Ensaios END (Radiografia RX, LP, Caixa de Vácuo e PMI) | 2.25d | 2026-12-24 | 2026-12-29 | 20 | 1.8 d | 2.3 d | 3.4 d | 100.0% | 4.0 - FABRICAÇÃO E MONTAGEM |
| 22 | 4.7 | Preparação e Execução do Teste Hidrostático (TH) Fabril | 2d | 2026-12-30 | 2027-01-01 | 21 | 1.6 d | 2.0 d | 3.0 d | 100.0% | 4.0 - FABRICAÇÃO E MONTAGEM |
| 23 | 5.0 | **5.0 PINTURA (Peso: 7%)** | 8d | 2027-01-04 | 2027-01-12 |  |  |  |  |  |  |
| 24 | 5.1 | Decapagem Química e Passivação Integral das Superfícies em Aço Inox | 3d | 2027-01-04 | 2027-01-07 | 22 | 2.4 d | 3.0 d | 4.5 d | 100.0% | 5.0 - PINTURA |
| 25 | 5.2 | Jateamento e Pintura Externa dos Acessórios em Aço Carbono (Munsell 5Y 8/12) | 2d | 2027-01-08 | 2027-01-12 | 24 | 1.6 d | 2.0 d | 3.0 d | 100.0% | 5.0 - PINTURA |

Notes:
- 1: CRONOGRAMA GERADO POR PIPELINE INTELIGENTE COM EAP PADRONIZADA. / Análise de Monte Carlo (20.000 simulações): / • Prazo P50: 81.3 dias úteis / P90: 85.3 dias úteis / • Probabilidade de cumprimento do prazo contratual: 0.0% / • Buffer de contingência sugerido: 4.0 dias úteis / • Custo Médio Estimado: R$ 413.7k (Contingência P80-P50: R$ 20.0k) / Text1/2/3 = Estimativas Otimista/Provável/Pessimista / Text4 = Índice de Criticidade (%) / Text5 = Pacote WBS.
- 3: Estimativas de 3 Pontos: Otimista = 0.8d / Provável = 1.0d / Pessimista = 1.5d. / Índice de Criticidade (Monte Carlo): 100.0% das 20.000 iterações no Caminho Crítico.
- 4: Estimativas de 3 Pontos: Otimista = 0.8d / Provável = 1.0d / Pessimista = 1.5d. / Índice de Criticidade (Monte Carlo): 100.0% das 20.000 iterações no Caminho Crítico.
- 6: Estimativas de 3 Pontos: Otimista = 3.4d / Provável = 4.3d / Pessimista = 6.4d. / Índice de Criticidade (Monte Carlo): 100.0% das 20.000 iterações no Caminho Crítico.
- 7: Estimativas de 3 Pontos: Otimista = 2.9d / Provável = 3.6d / Pessimista = 5.4d. / Índice de Criticidade (Monte Carlo): 100.0% das 20.000 iterações no Caminho Crítico.
- 8: Estimativas de 3 Pontos: Otimista = 2.2d / Provável = 2.8d / Pessimista = 4.2d. / Índice de Criticidade (Monte Carlo): 100.0% das 20.000 iterações no Caminho Crítico.
- 9: Estimativas de 3 Pontos: Otimista = 2.9d / Provável = 3.6d / Pessimista = 5.4d. / Índice de Criticidade (Monte Carlo): 100.0% das 20.000 iterações no Caminho Crítico.
- 11: Estimativas de 3 Pontos: Otimista = 2.6d / Provável = 3.2d / Pessimista = 4.8d. / Índice de Criticidade (Monte Carlo): 100.0% das 20.000 iterações no Caminho Crítico.
- 12: Estimativas de 3 Pontos: Otimista = 10.2d / Provável = 12.8d / Pessimista = 19.2d. / Índice de Criticidade (Monte Carlo): 100.0% das 20.000 iterações no Caminho Crítico.
- 13: Estimativas de 3 Pontos: Otimista = 5.1d / Provável = 6.4d / Pessimista = 9.6d. / Índice de Criticidade (Monte Carlo): 0.0% das 20.000 iterações no Caminho Crítico.
- 14: Estimativas de 3 Pontos: Otimista = 4.2d / Provável = 5.3d / Pessimista = 7.9d. / Índice de Criticidade (Monte Carlo): 100.0% das 20.000 iterações no Caminho Crítico.
- 16: Estimativas de 3 Pontos: Otimista = 3.4d / Provável = 4.3d / Pessimista = 6.4d. / Índice de Criticidade (Monte Carlo): 100.0% das 20.000 iterações no Caminho Crítico.
- 17: Estimativas de 3 Pontos: Otimista = 3.4d / Provável = 4.3d / Pessimista = 6.4d. / Índice de Criticidade (Monte Carlo): 100.0% das 20.000 iterações no Caminho Crítico.
- 18: Estimativas de 3 Pontos: Otimista = 5.7d / Provável = 7.1d / Pessimista = 10.6d. / Índice de Criticidade (Monte Carlo): 100.0% das 20.000 iterações no Caminho Crítico.
- 19: Estimativas de 3 Pontos: Otimista = 3.4d / Provável = 4.3d / Pessimista = 6.4d. / Índice de Criticidade (Monte Carlo): 100.0% das 20.000 iterações no Caminho Crítico.
- 20: Estimativas de 3 Pontos: Otimista = 3.4d / Provável = 4.3d / Pessimista = 6.4d. / Índice de Criticidade (Monte Carlo): 100.0% das 20.000 iterações no Caminho Crítico.
- 21: Estimativas de 3 Pontos: Otimista = 1.8d / Provável = 2.3d / Pessimista = 3.4d. / Índice de Criticidade (Monte Carlo): 100.0% das 20.000 iterações no Caminho Crítico.
- 22: Estimativas de 3 Pontos: Otimista = 1.6d / Provável = 2.0d / Pessimista = 3.0d. / Índice de Criticidade (Monte Carlo): 100.0% das 20.000 iterações no Caminho Crítico.
- 24: Estimativas de 3 Pontos: Otimista = 2.4d / Provável = 3.0d / Pessimista = 4.5d. / Índice de Criticidade (Monte Carlo): 100.0% das 20.000 iterações no Caminho Crítico.
- 25: Estimativas de 3 Pontos: Otimista = 1.6d / Provável = 2.0d / Pessimista = 3.0d. / Índice de Criticidade (Monte Carlo): 100.0% das 20.000 iterações no Caminho Crítico.

| ID | WBS | Task | Duration | Start | Finish | Predecessors | Estimativa Otimista | Estimativa Provavel | Estimativa Pessimista | Indice Criticidade (%) | Pacote WBS / EAP |
| --- | --- | --- | --- | --- | --- | --- | --- | --- | --- | --- | --- |
| 26 | 6.0 | **6.0 EXPEDIÇÃO (Peso: 1%)** | 7d | 2027-01-13 | 2027-01-20 |  |  |  |  |  |  |
| 27 | 6.1 | Emissão, Compilação e Aprovação do Data Book Final com ART (SOP-BRA-019-01) | 1d | 2027-01-13 | 2027-01-14 | 25 | 0.8 d | 1.0 d | 1.5 d | 100.0% | 6.0 - EXPEDIÇÃO |
| 28 | 6.2 | Embalagem Especial, Fabricação do Berço e Carregamento | 1d | 2027-01-15 | 2027-01-18 | 27 | 0.8 d | 1.0 d | 1.5 d | 100.0% | 6.0 - EXPEDIÇÃO |
| 29 | 6.3 | Transporte Rodoviário Especial CIF e Entrega Técnica no Polo Camaçari/BA | 1d | 2027-01-19 | 2027-01-20 | 28 | 0.8 d | 1.0 d | 1.5 d | 100.0% | 6.0 - EXPEDIÇÃO |

Notes:
- 27: Estimativas de 3 Pontos: Otimista = 0.8d / Provável = 1.0d / Pessimista = 1.5d. / Índice de Criticidade (Monte Carlo): 100.0% das 20.000 iterações no Caminho Crítico.
- 28: Estimativas de 3 Pontos: Otimista = 0.8d / Provável = 1.0d / Pessimista = 1.5d. / Índice de Criticidade (Monte Carlo): 100.0% das 20.000 iterações no Caminho Crítico.
- 29: Estimativas de 3 Pontos: Otimista = 0.8d / Provável = 1.0d / Pessimista = 1.5d. / Índice de Criticidade (Monte Carlo): 100.0% das 20.000 iterações no Caminho Crítico.
